# Explorer les cours de Deleuze avec l’IA

Schedule from GanttProject, 2025-01-27 to 2026-02-04.
Laboratoire Paragraphe, BnF DataLab, Huma-Num

## Calendars

- Project calendar: Mon-Fri working; Sat-Sun off.

## Resources

| Resource | Group | Rate |
| --- | --- | --- |
| Samuel Szoniecky |  | 150 |
| Gabrielle Godin |  | 150 |
| Contact BnF DataLab | Expert |  |
| Contact Huma-Num | Expert |  |
| Expert 1 | Expert |  |
| Expert 2 | Expert |  |
| Expert 3 | Expert |  |
| Stagiaire 1 | Stagiaire |  |
| Stagiaire 2 | Stagiaire |  |
| Equipe pédagogique P8 |  |  |
| Etudiants Master Humanités Numériques |  |  |

## Schedule

| ID | WBS | Task | Duration | Start | Finish | Resources |
| --- | --- | --- | --- | --- | --- | --- |
| 1 | 1 | **Réunions de suivi** | 256d | 2025-01-27 | 2026-01-19 | Samuel Szoniecky; Gabrielle Godin; Contact BnF DataLab; Contact Huma-Num |
| 2 | 1.1 | réunion 1 | 1d | 2025-01-27 | 2025-01-27 |  |
| 3 | 1.2 | réunion 2 | 1d | 2025-02-03 | 2025-02-03 |  |
| 4 | 1.3 | réunion 3 | 1d | 2025-02-10 | 2025-02-10 |  |
| 5 | 1.4 | réunion 4 | 1d | 2025-02-17 | 2025-02-17 |  |
| 6 | 1.5 | réunion 5 | 1d | 2025-02-24 | 2025-02-24 |  |
| 7 | 1.6 | réunion 6 | 1d | 2025-03-03 | 2025-03-03 |  |
| 8 | 1.7 | réunion 7 | 1d | 2025-03-10 | 2025-03-10 |  |
| 9 | 1.8 | réunion 8 | 1d | 2025-03-17 | 2025-03-17 |  |
| 10 | 1.9 | réunion 9 | 1d | 2025-03-24 | 2025-03-24 |  |
| 11 | 1.10 | réunion 10 | 1d | 2025-03-31 | 2025-03-31 |  |
| 12 | 1.11 | réunion 11 | 1d | 2025-04-07 | 2025-04-07 |  |
| 13 | 1.12 | réunion 12 | 1d | 2025-04-14 | 2025-04-14 |  |
| 14 | 1.13 | réunion 13 | 1d | 2025-04-21 | 2025-04-21 |  |
| 15 | 1.14 | réunion 14 | 1d | 2025-04-28 | 2025-04-28 |  |
| 16 | 1.15 | réunion 15 | 1d | 2025-05-05 | 2025-05-05 |  |
| 17 | 1.16 | réunion 16 | 1d | 2025-05-12 | 2025-05-12 |  |
| 18 | 1.17 | réunion 17 | 1d | 2025-05-19 | 2025-05-19 |  |
| 19 | 1.18 | réunion 18 | 1d | 2025-05-26 | 2025-05-26 |  |
| 20 | 1.19 | réunion 19 | 1d | 2025-06-02 | 2025-06-02 |  |
| 21 | 1.20 | réunion 20 | 1d | 2025-06-09 | 2025-06-09 |  |
| 22 | 1.21 | réunion 21 | 1d | 2025-06-16 | 2025-06-16 |  |
| 23 | 1.22 | réunion 22 | 1d | 2025-06-23 | 2025-06-23 |  |
| 24 | 1.23 | réunion 23 | 1d | 2025-06-30 | 2025-06-30 |  |
| 25 | 1.24 | réunion 24 | 1d | 2025-07-07 | 2025-07-07 |  |
| 26 | 1.25 | réunion 25 | 1d | 2025-07-14 | 2025-07-14 |  |
| 27 | 1.26 | réunion 26 | 1d | 2025-07-21 | 2025-07-21 |  |
| 28 | 1.27 | réunion 27 | 1d | 2025-07-28 | 2025-07-28 |  |
| 29 | 1.28 | réunion 28 | 1d | 2025-08-04 | 2025-08-04 |  |
| 30 | 1.29 | réunion 29 | 1d | 2025-08-11 | 2025-08-11 |  |
| 31 | 1.30 | réunion 30 | 1d | 2025-08-18 | 2025-08-18 |  |
| 32 | 1.31 | réunion 31 | 1d | 2025-08-25 | 2025-08-25 |  |
| 33 | 1.32 | réunion 32 | 1d | 2025-09-01 | 2025-09-01 |  |
| 34 | 1.33 | réunion 33 | 1d | 2025-09-08 | 2025-09-08 |  |
| 35 | 1.34 | réunion 34 | 1d | 2025-09-15 | 2025-09-15 |  |
| 36 | 1.35 | réunion 35 | 1d | 2025-09-22 | 2025-09-22 |  |
| 37 | 1.36 | réunion 36 | 1d | 2025-09-29 | 2025-09-29 |  |
| 38 | 1.37 | réunion 37 | 1d | 2025-10-06 | 2025-10-06 |  |
| 39 | 1.38 | réunion 38 | 1d | 2025-10-13 | 2025-10-13 |  |
| 40 | 1.39 | réunion 39 | 1d | 2025-10-20 | 2025-10-20 |  |
| 41 | 1.40 | réunion 40 | 1d | 2025-10-27 | 2025-10-27 |  |
| 42 | 1.41 | réunion 41 | 1d | 2025-11-03 | 2025-11-03 |  |
| 43 | 1.42 | réunion 42 | 1d | 2025-11-10 | 2025-11-10 |  |
| 44 | 1.43 | réunion 43 | 1d | 2025-11-17 | 2025-11-17 |  |
| 45 | 1.44 | réunion 44 | 1d | 2025-11-24 | 2025-11-24 |  |
| 46 | 1.45 | réunion 45 | 1d | 2025-12-01 | 2025-12-01 |  |
| 47 | 1.46 | réunion 46 | 1d | 2025-12-08 | 2025-12-08 |  |
| 48 | 1.47 | réunion 47 | 1d | 2025-12-15 | 2025-12-15 |  |
| 49 | 1.48 | réunion 48 | 1d | 2025-12-22 | 2025-12-22 |  |
| 50 | 1.49 | réunion 49 | 1d | 2025-12-29 | 2025-12-29 |  |
| 51 | 1.50 | réunion 50 | 1d | 2026-01-05 | 2026-01-05 |  |
| 52 | 1.51 | réunion 51 | 1d | 2026-01-12 | 2026-01-12 |  |
| 53 | 1.52 | réunion 52 | 1d | 2026-01-19 | 2026-01-19 |  |

| ID | WBS | Task | Type | Duration | Start | Finish | Predecessors | Resources |
| --- | --- | --- | --- | --- | --- | --- | --- | --- |
| 54 | 2 | **Sujet des réunions** |  | 260d | 2025-01-27 | 2026-01-23 |  | Samuel Szoniecky; Gabrielle Godin; Contact BnF DataLab; Contact Huma-Num |
| 55 | 2.1 | Présentation des équipes | milestone | 0d | 2025-01-27 | 2025-01-27 | 2SS |  |
| 56 | 2.2 | Présentation du prototype | milestone | 0d | 2025-01-27 | 2025-01-27 | 55SS |  |
| 57 | 2.3 | Présentation de l'écosystème BnF - Huma-Num | milestone | 0d | 2025-01-27 | 2025-01-27 | 56SS |  |
| 58 | 2.4 | Présentations des expertises | milestone | 0d | 2025-03-10 | 2025-03-10 | 68 |  |
| 59 | 2.5 | Présentation des spécifications | milestone | 0d | 2025-04-21 | 2025-04-21 | 69 |  |
| 60 | 2.6 | Présentation des IHM d'éditorialisation | milestone | 0d | 2025-05-19 | 2025-05-19 | 79 |  |
| 61 | 2.7 | Présentation du processus de transcription | milestone | 0d | 2025-06-26 | 2025-06-26 | 70 |  |
| 62 | 2.8 | Présentation du protocole d'éditorialisation | milestone | 0d | 2025-07-24 | 2025-07-24 | 83 |  |
| 63 | 2.9 | Présentation des bêta-tests | milestone | 0d | 2025-10-02 | 2025-10-02 | 88 |  |
| 64 | 2.10 | Mise en production | milestone | 0d | 2025-10-16 | 2025-10-16 | 92 |  |
| 65 | 2.11 | Ouverture Journée d'étude | milestone | 0d | 2026-01-21 | 2026-01-21 | 95 |  |
| 66 | 2.12 | Jury Hackathon | milestone | 0d | 2026-01-26 | 2026-01-26 | 96 |  |
| 67 | 3 | **Conception et développement** |  | 178d | 2025-01-27 | 2025-10-01 |  |  |
| 68 | 3.1 | Consultations des experts |  | 30d | 2025-01-27 | 2025-03-07 | 57 | Samuel Szoniecky [50%]; Gabrielle Godin; Expert 1 [5%]; Expert 2 [5%]; Expert 3 [5%] |
| 69 | 3.2 | Spécification de l'écosystème |  | 30d | 2025-03-10 | 2025-04-18 | 68 | Samuel Szoniecky; Gabrielle Godin [50%]; Contact BnF DataLab [10%]; Contact Huma-Num [10%] |
| 70 | 3.3 | **Processus de transcription automatique** |  | 48d | 2025-04-21 | 2025-06-25 | 69 |  |
| 71 | 3.3.1 | Développement base de données |  | 5d | 2025-04-21 | 2025-04-25 | 69 | Samuel Szoniecky; Contact BnF DataLab [20%]; Contact Huma-Num [20%] |
| 72 | 3.3.2 | Développement API |  | 6d | 2025-04-28 | 2025-05-05 | 71 | Samuel Szoniecky; Contact BnF DataLab [10%]; Contact Huma-Num [10%] |
| 73 | 3.3.3 | Développement IHM BackOffice |  | 5d | 2025-05-06 | 2025-05-12 | 72 | Samuel Szoniecky [50%]; Gabrielle Godin |
| 74 | 3.3.4 | Tests des transcriptions |  | 5d | 2025-05-13 | 2025-05-19 | 73 | Gabrielle Godin |
| 75 | 3.3.5 | Benchmark solutions de transcription |  | 7d | 2025-05-20 | 2025-05-28 | 74 | Samuel Szoniecky |
| 76 | 3.3.6 | Traitement des collections numériques |  | 20d | 2025-05-29 | 2025-06-25 | 75 | Gabrielle Godin |
| 77 | 3.3.7 | Documentations |  | 10d | 2025-06-12 | 2025-06-25 | 76FF | Samuel Szoniecky [50%]; Gabrielle Godin; Stagiaire 1; Stagiaire 2 |

| ID | WBS | Task | Duration | Start | Finish | Predecessors | Resources |
| --- | --- | --- | --- | --- | --- | --- | --- |
| 78 | 3.4 | **Protocole d'éditorialisation** | 68d | 2025-04-21 | 2025-07-23 |  |  |
| 79 | 3.4.1 | Design des IHMs | 20d | 2025-04-21 | 2025-05-16 | 69 | Samuel Szoniecky [50%]; Gabrielle Godin; Stagiaire 1; Stagiaire 2 |
| 80 | 3.4.2 | Développement des modules JS | 20d | 2025-06-26 | 2025-07-23 | 76 | Samuel Szoniecky; Stagiaire 1; Stagiaire 2 |
| 81 | 3.4.3 | Intégration HTML CSS | 30d | 2025-06-12 | 2025-07-23 | 79, 80FF | Samuel Szoniecky [50%]; Stagiaire 1; Stagiaire 2 |
| 82 | 3.4.4 | Tests d'éditorialisation | 10d | 2025-07-10 | 2025-07-23 | 81FF | Gabrielle Godin; Contact BnF DataLab [20%]; Contact Huma-Num [20%]; Stagiaire 1; Stagiaire 2 |
| 83 | 3.4.5 | Documentations | 15d | 2025-07-03 | 2025-07-23 | 82FF | Gabrielle Godin; Stagiaire 1; Stagiaire 2 |
| 84 | 3.5 | **Pré-production** | 50d | 2025-07-24 | 2025-10-01 |  |  |
| 85 | 3.5.1 | Déploiement de la pré-prodruction | 10d | 2025-07-24 | 2025-08-06 | 83 | Samuel Szoniecky; Contact BnF DataLab [20%]; Contact Huma-Num [20%]; Stagiaire 1; Stagiaire 2 |
| 86 | 3.5.2 | Bêta-tests experts | 20d | 2025-08-07 | 2025-09-03 | 85 | Gabrielle Godin; Expert 1 [5%]; Expert 2 [5%]; Expert 3 [5%]; Stagiaire 1; Stagiaire 2 |
| 87 | 3.5.3 | Corrections des demandes | 10d | 2025-09-04 | 2025-09-17 | 86 | Samuel Szoniecky; Stagiaire 1; Stagiaire 2 |
| 88 | 3.5.4 | Documentations | 10d | 2025-09-18 | 2025-10-01 | 87 | Gabrielle Godin; Stagiaire 1; Stagiaire 2 |
| 89 | 4 | **Production** | 10d | 2025-10-02 | 2025-10-15 |  |  |
| 90 | 4.1 | Déploiement en production | 5d | 2025-10-02 | 2025-10-08 | 88 | Samuel Szoniecky; Contact BnF DataLab; Contact Huma-Num |
| 91 | 4.2 | Tests de production | 5d | 2025-10-02 | 2025-10-08 | 90FF | Gabrielle Godin |
| 92 | 4.3 | Documentations | 5d | 2025-10-09 | 2025-10-15 | 91 | Gabrielle Godin |
| 93 | 5 | **Valorisations** | 80d | 2025-10-16 | 2026-02-04 |  |  |
| 94 | 5.1 | Rédactions articles scientifiques | 80d | 2025-10-16 | 2026-02-04 | 92 | Samuel Szoniecky; Gabrielle Godin; Contact BnF DataLab [50%]; Contact Huma-Num [50%] |
| 95 | 5.2 | Journée d'études | 2d | 2026-01-19 | 2026-01-20 |  | Samuel Szoniecky; Gabrielle Godin; Equipe pédagogique P8; Etudiants Master Humanités Numériques |
| 96 | 5.3 | Hakhaton | 3d | 2026-01-21 | 2026-01-23 | 95 | Samuel Szoniecky; Gabrielle Godin; Equipe pédagogique P8; Etudiants Master Humanités Numériques |
